# National Health Campaign

Schedule from MS Project, 2024-03-06 to 2024-04-29, costs in €, A marks actual dates.
Research Programme
ABC Research Ltd

## Calendars

- Standard: Mon-Fri 08:00-12:00, 13:00-17:00; Sat-Sun off.

## Resources

| Resource | Group | Rate |
| --- | --- | --- |
| Joanne Kelly | Management | 19.23 |
| Riona Carr | Executive | 6.25 |
| Mary Breen | Management | 19.23 |
| Tom Joyce | Office Staff | 6.88 |
| Conf Room | Facilities |  |
| Junior Staff | Office Staff | 3.75 |
| Printing |  |  |

## Schedule

| ID | WBS | Task | Type | Duration | Start | Finish | Predecessors | Complete | Remaining | Actual start | Actual finish | Baseline start | Baseline finish | Baseline duration | Total slack | Free slack | Resources | Work | Actual work | Cost | Baseline cost | Actual cost |
| --- | --- | --- | --- | --- | --- | --- | --- | --- | --- | --- | --- | --- | --- | --- | --- | --- | --- | --- | --- | --- | --- | --- |
| 1 | 1 | **National Health Campaign** |  | 39d | 2024-03-06 A | 2024-04-29 |  | 50% | 19.39d |  |  | 2024-03-06 | 2024-04-29 | 39d |  |  | Joanne Kelly | 744h | 209h | 10,199.42 | 10,154.42 | 1,869.66 |
| 2 | 1.1 | **Planning** |  | 13d | 2024-03-06 A | 2024-03-22 |  | 100% |  |  | 2024-03-07 | 2024-03-06 | 2024-03-22 | 13d |  |  |  | 16h | 16h | 307.69 | 307.69 | 307.69 |
| 3 | 1.1.1 | Design Questionnaire | manual | 2d | 2024-03-06 A | 2024-03-07 A |  | 100% |  |  |  | 2024-03-06 | 2024-03-07 | 2d |  |  | Joanne Kelly | 16h | 16h | 307.69 | 307.69 | 307.69 |
| 4 | 1.2 | Type Questionnaire | manual | 2d | 2024-03-25 A | 2024-03-26 A | 2 | 100% |  |  |  | 2024-03-25 | 2024-03-25 | 1d |  |  | Junior Staff | 16h | 16h | 60 | 30 | 60 |
| 5 | 1.3 | Print Questionnaire |  | 1.2w | 2024-03-27 A | 2024-04-03 A | 4 | 100% |  |  |  | 2024-03-26 | 2024-04-02 | 1.2w |  |  | Printing | 48h | 48h |  |  |  |
| 6 | 1.4 | Invite interviewers to Briefing Meeting |  | 3d | 2024-03-27 A | 2024-03-29 | 5SS | 75% | 0.75d |  |  | 2024-03-26 | 2024-03-28 | 3d | 21d | 0d | Riona Carr | 24h | 18h | 150 | 150 | 112.5 |
| 7 | 1.5 | Survey Planning Complete | milestone | 0d | 2024-03-29 | 2024-03-29 | 6 |  |  |  |  | 2024-03-28 | 2024-03-28 | 0d | 21d |  |  |  |  |  |  |  |
| 8 | 1.6 | **Briefing Setup** |  | 6d | 2024-03-26 A | 2024-04-02 |  | 13% | 5.19d |  |  | 2024-03-26 | 2024-04-01 | 5d | 19d |  |  | 56h | 11h | 342.5 | 327.5 | 45.62 |
| 9 | 1.6.1 | Book Conference Room for Briefing Meeting |  | 4h | 2024-03-26 A | 2024-03-27 | 4 | 75% | 1h |  |  | 2024-03-26 | 2024-03-26 | 4h | 23.75d | 0d | Tom Joyce | 4h | 3h | 27.5 | 27.5 | 20.62 |
| 10 | 1.6.2 | Contact Interviewing Loctions |  | 2d | 2024-03-26 | 2024-03-27 | 9SS |  |  |  |  | 2024-03-26 | 2024-03-27 | 2d | 19.5d | 0d | Tom Joyce | 16h |  | 110 | 110 |  |
| 11 | 1.6.3 | Prepare Rosters |  | 3d | 2024-03-28 | 2024-04-01 | 10 |  |  |  |  | 2024-03-28 | 2024-04-01 | 3d | 19.5d | 0d | Tom Joyce | 24h |  | 165 | 165 |  |
| 12 | 1.6.4 | Prepare packs for each Interviewers |  | 0.5d | 2024-04-02 | 2024-04-02 | 11 |  |  |  |  | 2024-03-27 | 2024-03-27 | 0d | 19.5d |  | Junior Staff | 4h |  | 15 |  |  |
| 13 | 1.6.5 | Briefing Meeting |  | 4h | 2024-04-02 A | 2024-04-02 A | 12 | 100% |  |  |  | 2024-03-27 | 2024-03-27 | 4h |  |  | Conf Room; Riona Carr | 8h | 8h | 25 | 25 | 25 |
| 14 | 1.6.6 | Interviewers briefing complete | milestone | 0d | 2024-04-02 A | 2024-04-02 | 13 | 75% | 0d |  |  | 2024-03-28 | 2024-03-28 | 0d | 0d |  |  |  |  |  |  |  |
| 15 | 1.7 | **Data Processing** |  | 25d | 2024-03-20 | 2024-04-23 |  | 31% | 17.19d | 2024-03-26 |  | 2024-03-20 | 2024-04-23 | 25d |  |  |  | 144h | 40h | 877.69 | 877.69 | 190 |
| 16 | 1.7.1 | Prepare Book In Forms | manual | 2d | 2024-03-29 A | 2024-04-01 A |  | 100% |  |  |  | 2024-03-29 | 2024-04-01 | 2d |  |  | Riona Carr | 16h | 16h | 100 | 100 | 100 |
| 17 | 1.7.2 | Check Questionnaires | manual | 2d | 2024-04-02 | 2024-04-03 | 16 |  |  |  |  | 2024-04-02 | 2024-04-03 | 2d |  |  | Junior Staff | 16h |  | 60 | 60 |  |
| 18 | 1.7.3 | Code Questionnaire | manual | 1.4w | 2024-03-26 | 2024-04-03 | 17FF |  |  |  |  | 2024-03-26 | 2024-04-03 | 1.4w |  |  | Junior Staff | 56h |  | 210 | 210 |  |
| 19 | 1.7.4 | Input Data in Computer | manual | 3d | 2024-04-01 A | 2024-04-03 A | 18FS-3d | 100% |  |  |  | 2024-04-01 | 2024-04-03 | 3d |  |  | Junior Staff | 24h | 24h | 90 | 90 | 90 |
| 20 | 1.7.5 | Analyse the Data | manual | 2d | 2024-04-18 | 2024-04-19 | 19 |  |  |  |  | 2024-04-18 | 2024-04-19 | 2d |  |  | Joanne Kelly; Tom Joyce | 32h |  | 417.69 | 417.69 |  |
| 21 | 1.7.6 | Data Processing complete | milestone, manual | 0d | 2024-04-22 A | 2024-04-22 A | 20 | 100% |  |  |  | 2024-04-22 | 2024-04-22 | 0d |  |  |  |  |  |  |  |  |
| 22 | 1.8 | **Interpretation** |  | 6d | 2024-04-22 | 2024-04-29 | 14 | 47% | 3.19d | 2024-03-16 |  | 2024-04-22 | 2024-04-29 | 6d |  |  |  | 128h | 60h | 2,461.54 | 2,461.54 | 1,153.85 |
| 23 | 1.8.1 | Prepare Presentation | manual | 3d | 2024-03-16 | 2024-03-19 |  |  |  |  |  | 2024-03-16 | 2024-03-19 | 3d |  |  | Mary Breen; Joanne Kelly | 48h |  | 923.08 | 923.08 |  |
| 24 | 1.8.2 | Prepare Research Report |  | 1w | 2024-03-20 A | 2024-04-23 | 23 | 75% | 0.25w |  |  | 2024-03-20 | 2024-03-26 | 1w | 4.75d |  | Mary Breen; Joanne Kelly | 80h | 60h | 1,538.46 | 1,538.46 | 1,153.85 |
| 25 | 1.8.3 | Project complete | milestone, manual | 0d | 2024-03-26 | 2024-03-26 | 23 |  |  |  |  | 2024-03-26 | 2024-03-26 | 0d |  |  |  |  |  |  |  |  |
